# Planificacion UP

Schedule from MS Project, 2013-02-12 to 2013-03-22, status date 2013-04-21, 2 hours a day, costs in €, A marks actual dates.

## Calendars

- Jornada 2h: Mon-Fri 08:00-12:00, 13:00-17:00; Sat-Sun off.

## Resources

| Resource | Rate |
| --- | --- |
| Manuel David Vicent Giménez | 15 |
| Raúl Loza Martínez | 15 |
| Juan Antonio Brotons Tristán | 15 |
| Juan Esquerdo Roig | 15 |
| Daniel Pedrajas Van de Velde | 15 |

## Schedule

| ID | WBS | Task | Type | Duration | Start | Finish | Predecessors | Complete | Remaining | Total slack | Free slack | Constraint | Resources | Work | Cost |
| --- | --- | --- | --- | --- | --- | --- | --- | --- | --- | --- | --- | --- | --- | --- | --- |
| 1 | 1 | **Inicio. Estimaciones y Plan inicial** |  | 16d | 2013-02-12 08:00 A | 2013-02-15 17:00 |  |  | 16d | 0d |  | start no earlier than 2013-02-12 08:00 |  | 52h | 780 |
| 2 | 1.1 | Especificar Modelo de negocio |  | 1d | 2013-02-12 08:00 | 2013-02-12 10:00 |  |  |  | 6d | 0d |  | Daniel Pedrajas Van de Velde | 2h | 30 |
| 3 | 1.2 | Especificar casos de usos |  | 5d | 2013-02-12 10:00 | 2013-02-13 12:00 | 2 |  |  | 6d | 0d |  | Juan Antonio Brotons Tristán | 10h | 150 |
| 4 | 1.3 | Seleccionar herramientas |  | 2d | 2013-02-13 13:00 | 2013-02-13 17:00 | 3 |  |  | 6d | 0d |  | Juan Esquerdo Roig | 4h | 60 |
| 5 | 1.4 | Configurar entorno |  | 2d | 2013-02-14 08:00 | 2013-02-14 12:00 | 4 |  |  | 6d |  |  | Raúl Loza Martínez | 4h | 60 |
| 6 | 1.5 | Estimación a grueso modo |  | 8d | 2013-02-12 08:00 | 2013-02-13 17:00 |  |  |  | 0d |  |  | Manuel David Vicent Giménez; Raúl Loza Martínez | 16h | 240 |
| 7 | 1.6 | Planificación a grueso modo |  | 8d | 2013-02-14 08:00 | 2013-02-15 17:00 | 6 |  |  | 0d |  |  | Daniel Pedrajas Van de Velde; Juan Antonio Brotons Tristán | 16h | 240 |
| 8 | 1.7 | Plan y estimaciones generales | milestone | 0d | 2013-02-15 08:00 A | 2013-02-15 08:00 A | 7 | 100% |  |  |  |  |  |  |  |
| 9 | 2 | **Elaboración. Prototipo interface aplicación.** |  | 20d | 2013-02-18 08:00 A | 2013-02-22 17:00 | 1 |  | 20d | 0d |  | start no earlier than 2013-02-12 08:00 |  | 40h | 600 |
| 10 | 2.1 | **Iteración E1. Pantallas** |  | 10d | 2013-02-18 08:00 A | 2013-02-20 12:00 |  |  | 10d | 0d |  | start no earlier than 2013-02-12 08:00 |  | 20h | 300 |
| 11 | 2.1.1 | Clientes |  | 2h | 2013-02-18 08:00 | 2013-02-18 10:00 |  |  |  | 0d |  |  | Manuel David Vicent Giménez | 2h | 30 |
| 12 | 2.1.2 | Proveedores |  | 2h | 2013-02-18 10:00 | 2013-02-18 12:00 | 11 |  |  | 0d |  |  | Raúl Loza Martínez | 2h | 30 |
| 13 | 2.1.3 | Libro mayor |  | 2h | 2013-02-18 13:00 | 2013-02-18 15:00 | 12 |  |  | 0d |  |  | Juan Esquerdo Roig | 2h | 30 |
| 14 | 2.1.4 | Facturas expedidas |  | 2h | 2013-02-18 15:00 | 2013-02-18 17:00 | 13 |  |  | 0d |  |  | Daniel Pedrajas Van de Velde | 2h | 30 |
| 15 | 2.1.5 | Facturas recibidas |  | 2h | 2013-02-19 08:00 | 2013-02-19 10:00 | 14 |  |  | 0d |  |  | Juan Antonio Brotons Tristán | 2h | 30 |
| 16 | 2.1.6 | Operaciones con terceros |  | 2h | 2013-02-19 10:00 | 2013-02-19 12:00 | 15 |  |  | 0d |  |  | Juan Esquerdo Roig | 2h | 30 |
| 17 | 2.1.7 | Retenciones aplicadas |  | 2h | 2013-02-19 13:00 | 2013-02-19 15:00 | 16 |  |  | 0d |  |  | Manuel David Vicent Giménez | 2h | 30 |
| 18 | 2.1.8 | Retenciones soportadas |  | 2h | 2013-02-19 15:00 | 2013-02-19 17:00 | 17 |  |  | 0d |  |  | Raúl Loza Martínez | 2h | 30 |
| 19 | 2.1.9 | Operaciones intracomunitarias |  | 2h | 2013-02-20 08:00 | 2013-02-20 10:00 | 18 |  |  | 0d |  |  | Daniel Pedrajas Van de Velde | 2h | 30 |
| 20 | 2.1.10 | Menú de modelos de Hacienda |  | 2h | 2013-02-20 10:00 | 2013-02-20 12:00 | 19 |  |  | 0d |  |  | Juan Antonio Brotons Tristán | 2h | 30 |
| 21 | 2.1.11 | Pantallas datos básicos | milestone | 0h | 2013-02-20 08:00 A | 2013-02-20 08:00 |  | 99% | 0h | 2d |  | start no earlier than 2013-02-20 08:00 |  |  |  |
| 22 | 2.2 | **Iteración E2. Pantallas** |  | 10d | 2013-02-20 13:00 | 2013-02-22 17:00 | 10 |  |  | 0d |  | start no earlier than 2013-02-12 08:00 |  | 20h | 300 |
| 23 | 2.2.1 | Lista ejercicios |  | 2h | 2013-02-20 13:00 | 2013-02-20 15:00 |  |  |  | 0d |  |  | Juan Esquerdo Roig | 2h | 30 |
| 24 | 2.2.2 | Copia de seguridad |  | 2h | 2013-02-20 15:00 | 2013-02-20 17:00 | 23 |  |  | 0d |  |  | Juan Antonio Brotons Tristán | 2h | 30 |
| 25 | 2.2.3 | Instalador automático |  | 2h | 2013-02-21 08:00 | 2013-02-21 10:00 | 24 |  |  | 0d |  |  | Daniel Pedrajas Van de Velde | 2h | 30 |
| 26 | 2.2.4 | Crear presupuesto |  | 2h | 2013-02-21 10:00 | 2013-02-21 12:00 | 25 |  |  | 0d |  |  | Manuel David Vicent Giménez | 2h | 30 |
| 27 | 2.2.5 | Crear albarán |  | 2h | 2013-02-21 13:00 | 2013-02-21 15:00 | 26 |  |  | 0d |  |  | Raúl Loza Martínez | 2h | 30 |
| 28 | 2.2.6 | Crear factura |  | 2h | 2013-02-21 15:00 | 2013-02-21 17:00 | 27 |  |  | 0d |  |  | Raúl Loza Martínez | 2h | 30 |
| 29 | 2.2.7 | Visualizar presupuesto |  | 2h | 2013-02-22 08:00 | 2013-02-22 10:00 | 28 |  |  | 0d |  |  | Manuel David Vicent Giménez | 2h | 30 |
| 30 | 2.2.8 | Visualizar albarán |  | 2h | 2013-02-22 10:00 | 2013-02-22 12:00 | 29 |  |  | 0d |  |  | Daniel Pedrajas Van de Velde | 2h | 30 |
| 31 | 2.2.9 | Visualizar factura |  | 2h | 2013-02-22 13:00 | 2013-02-22 15:00 | 30 |  |  | 0d |  |  | Juan Esquerdo Roig | 2h | 30 |
| 32 | 2.2.10 | Cobros y pagos realizados |  | 1h | 2013-02-22 15:00 | 2013-02-22 16:00 | 31 |  |  | 0d |  |  | Juan Antonio Brotons Tristán | 1h | 15 |
| 33 | 2.2.11 | Cobros y pagos pendientes |  | 1h | 2013-02-22 16:00 | 2013-02-22 17:00 | 32 |  |  | 0d |  |  | Juan Antonio Brotons Tristán | 1h | 15 |
| 34 | 2.2.12 | Pantallas de Informes | milestone | 0h | 2013-02-22 17:00 | 2013-02-22 17:00 | 33 |  |  | 0d |  |  |  |  |  |
| 35 | 2.3 | Prototipo de la Interfaz | milestone | 0h | 2013-02-22 17:00 | 2013-02-22 17:00 | 34 |  |  | 0d |  |  |  |  |  |

| ID | WBS | Task | Type | Duration | Start | Finish | Predecessors | Total slack | Constraint |
| --- | --- | --- | --- | --- | --- | --- | --- | --- | --- |
| 36 | 3 | **Construcción. Dotar de funcionalidades a las interfaces** |  | 60d | 2013-02-25 08:00 | 2013-03-15 17:00 | 9 | 0d | start no earlier than 2013-02-25 08:00 |
| 37 | 3.1 | **Iteración C1. Base de Datos e Implementación de Pantallas** |  | 20d | 2013-02-25 08:00 | 2013-03-01 17:00 |  | 0d | start no earlier than 2013-02-25 08:00 |
| 38 | 3.1.1 | Generar script de creación de tablas |  | 2h | 2013-02-25 08:00 | 2013-02-25 10:00 |  | 0d |  |
| 39 | 3.1.2 | Generar script de inserción de datos de prueba | milestone | 0h | 2013-02-25 10:00 | 2013-02-25 10:00 | 38 | 0d | finish no earlier than 2013-02-12 10:00 |
| 40 | 3.1.3 | Crear capa de acceso a datos |  | 12h | 2013-02-25 10:00 | 2013-02-26 15:00 | 39 | 0d | start no earlier than 2013-02-12 08:00 |
| 41 | 3.1.4 | Probar capa de acceso a datos |  | 4h | 2013-02-26 15:00 | 2013-02-27 10:00 | 40 | 0d | finish no earlier than 2013-02-12 10:00 |
| 42 | 3.1.5 | Implementar funcionalidad clientes |  | 20h | 2013-02-27 10:00 | 2013-03-01 15:00 | 41 | 0d | start no earlier than 2013-02-12 08:00 |
| 43 | 3.1.6 | Probar funcionalidad clientes |  | 2h | 2013-03-01 15:00 | 2013-03-01 17:00 | 42 | 0d | start no earlier than 2013-02-12 08:00 |
| 44 | 3.2 | **Iteración C2. Implementación de Pantallas** |  | 10d | 2013-03-04 08:00 | 2013-03-06 12:00 | 37 | 0d | start no earlier than 2013-02-25 08:00 |
| 45 | 3.2.1 | Implementar funcionalidades hasta 10h |  | 10h | 2013-03-04 08:00 | 2013-03-05 10:00 |  | 0d |  |
| 46 | 3.2.2 | Probar funcionalidad hasta 10h |  | 10h | 2013-03-05 10:00 | 2013-03-06 12:00 | 45 | 0d | start no earlier than 2013-02-12 08:00 |
| 47 | 3.3 | **Iteración C3. Implementación de Pantallas** |  | 10d | 2013-03-06 13:00 | 2013-03-08 17:00 | 44 | 0d | start no earlier than 2013-02-25 08:00 |
| 48 | 3.3.1 | Implementar funcionalidades hasta 10h |  | 10h | 2013-03-06 13:00 | 2013-03-07 15:00 |  | 0d |  |
| 49 | 3.3.2 | Probar funcionalidad hasta 10h |  | 10h | 2013-03-07 15:00 | 2013-03-08 17:00 | 48 | 0d | start no earlier than 2013-02-12 08:00 |
| 50 | 3.4 | **Iteración C4. Implementación de Pantallas** |  | 10d | 2013-03-11 08:00 | 2013-03-13 12:00 | 47 | 0d | start no earlier than 2013-02-25 08:00 |
| 51 | 3.4.1 | Implementar funcionalidades hasta 10h |  | 10h | 2013-03-11 08:00 | 2013-03-12 10:00 |  | 0d |  |
| 52 | 3.4.2 | Probar funcionalidad hasta 10h |  | 10h | 2013-03-12 10:00 | 2013-03-13 12:00 | 51 | 0d |  |
| 53 | 3.5 | **Iteración C5. Copia de seguridad** |  | 10d | 2013-03-13 13:00 | 2013-03-15 17:00 | 50 | 0d | start no earlier than 2013-02-25 08:00 |
| 54 | 3.5.1 | Implementar funcionalidades finales hasta 10h |  | 10h | 2013-03-13 13:00 | 2013-03-14 15:00 |  | 0d |  |
| 55 | 3.5.2 | Implementar modulo copia de seguridad |  | 2h | 2013-03-14 15:00 | 2013-03-14 17:00 | 54 | 0d |  |
| 56 | 3.5.3 | Probar copias de seguridad |  | 8h | 2013-03-15 08:00 | 2013-03-15 17:00 | 55 | 0d |  |
| 57 | 4 | **Transición. Pruebas de sistema y creación de soportes de instalación.** |  | 20d | 2013-03-18 08:00 | 2013-03-22 17:00 | 36 | 0d | start no earlier than 2013-02-12 08:00 |
| 58 | 4.1 | **Iteración T1. Pruebas del sistema** |  | 10d | 2013-03-18 08:00 | 2013-03-20 12:00 |  | 0d |  |
| 59 | 4.1.1 | Diseñar pruebas de la beta 10h |  | 4h | 2013-03-18 08:00 | 2013-03-18 12:00 |  | 0d |  |
| 60 | 4.1.2 | Probar con el cliente 10h |  | 16h | 2013-03-18 13:00 | 2013-03-20 12:00 | 59 | 0d |  |

| ID | WBS | Task | Duration | Start | Finish | Predecessors | Total slack |
| --- | --- | --- | --- | --- | --- | --- | --- |
| 61 | 4.2 | **Iteración T2. Soportes de instalación** | 10d | 2013-03-20 13:00 | 2013-03-22 17:00 | 58 | 0d |
| 62 | 4.2.1 | Implementar soportes de instalación | 10h | 2013-03-20 13:00 | 2013-03-21 15:00 |  | 0d |
| 63 | 4.2.2 | Probar soportes de instalación | 10h | 2013-03-21 15:00 | 2013-03-22 17:00 | 62 | 0d |
